# 010101010010101001010101001010100101

Schedule from MS Project MPX.

## Calendars

- Estándar: Mon-Fri 09:00 am-01:00 pm, 03:00 pm-07:00 pm; Sat-Sun off.

## Resources

| Resource |
| --- |
| Administrador de Contrato - Cliente |
| Líder Técnico - Cliente |
| Líder Funcional - Usuario Experto - Cliente |
| Funcionarios Técnicos - Cliente |
| Usuarios Finales - Cliente |
| Desarrollador PlanERP |
| Gerente de Proyecto PlanERP |
| Líder del Proyecto/Desarrollo PlanERP |
| Analista Procesos PlanERP |
| Analista de Calidad PlanERP |
| Especialista Base de Datos PlanERP |
| Consultor Especialista en Procesos de GADs PlanERP |

## Schedule

| ID | WBS | Task |
| --- | --- | --- |
| 1 | 0 | 20190122- Plan del Proyecto de Implementacion del SIIM Daule |
| 2 | 0 | Programa de Implementación SIIM |
| 3 | 0 | FASE 1: Implementación de Módulos de Servicio al Cliente (SC) y Atención al Ciudadano (AC) |
| 4 | 0 | ETAPA 1: Preparación del Proyecto e Instalación del SIIM - Módulos SC y AC |
| 5 | 0 | Actividades de Gestión del Proyecto |
| 6 | 0 | Revisión de Información de Contrato y Anexos |
| 7 | 0 | Definir la Organización del Proyecto |
| 8 | 0 | Kick-off Interno del Proyecto |
| 9 | 0 | Preparación del kick-off del Proyecto |
| 10 | 0 | Comunicación con el Cliente |
| 11 | 0 | Crear la presentación del kick-off |
| 12 | 0 | Reunión de Kick-off |
| 13 | 0 | Realizar la reunión de kick-off |
| 14 | 0 | Entrega e Instalación del Software |
| 15 | 0 | Instalar SIIM en Servidor |
| 16 | 0 | 1 Dirección de Desarrollo Territorial (No incluye Catastro) |
| 17 | 0 | 4 Dirección de Justicia y Vigilancia |
| 18 | 0 | 5 Dirección de Desarrollo Humano y Social |
| 19 | 0 | 8.3 Rentas |
| 20 | 0 | 8.4 Tesorería |
| 21 | 0 | 9.1 Mercados |
| 22 | 0 | 9.2 Cementerio |
| 23 | 0 | 9.3 Camal |
| 24 | 0 | 10 Registro de la Propiedad y Mercantil |
| 25 | 0 | 11 Administración de bomberos |
| 26 | 0 | 12 CRM para ciudadanos. Ventanilla Única |
| 27 | 0 | 15.1 BI Desarrollo Territorial |
| 28 | 0 | 15.5 BI Obras Públicas Municipales |
| 29 | 0 | 15.7 BI Registro de la Propiedad y Mercantil |
| 30 | 0 | 16.1 Consultas Portal Web |
| 31 | 0 | 16.2 Aplicación para móviles (APP) |
| 32 | 0 | Entrega de Software |
| 33 | 0 | Revisar la ETAPA del Proyecto |
| 34 | 0 | HITO: FINALIZACION ETAPA 1 |
| 35 | 0 | ETAPA 2: Levantamiento de Características Institucionales - Módulos SC y AC |
| 36 | 0 | Actividades de Gestión del Proyecto |
| 37 | 0 | Revisión del Plan del Proyecto |
| 38 | 0 | Programar talleres de requerimientos de Entidad |
| 39 | 0 | Sesiones de Requerimientos del Entidad |
| 40 | 0 | Conducir Sesiones de Requerimientos |
| 41 | 0 | Crear Documento de Características del Entidad |
| 42 | 0 | Revisar el Documento de Características del Entidad |
| 43 | 0 | Revisar el Documento de Características del Entidad |
| 44 | 0 | Revisar el Plan del Proyecto |
| 45 | 0 | Revisar la ETAPA del Proyecto |
| 46 | 0 | HITO: FINALIZACION ETAPA 2 |
| 47 | 0 | ETAPA 3: Migración de Datos, Configuración y Pruebas de Operación - Módulos SC y AC |
| 48 | 0 | Gestión General del Proyecto |
| 49 | 0 | Planificar cambio Organizacional |
| 50 | 0 | Planificar Entrenamiento a Usuarios Finales |
| 51 | 0 | Definir y Preparar la Migración de Datos |
| 52 | 0 | Configuración del Sistema en Producción |
| 53 | 0 | Instalar el SIIM en Producción |
| 54 | 0 | Configurar Inicialización del Sistema |
| 55 | 0 | Realizar la Migración de Datos |
| 56 | 0 | Desarrollar Adaptaciones al Software |
| 57 | 0 | Configuración del Sistema en base al Documento de Características del Entidad |
| 58 | 0 | Configurar Interfaces |
| 59 | 0 | Configurar Usuarios y Autorizaciones |
| 60 | 0 | Gestión del Cambio Organizacional |
| 61 | 0 | Conducir la comunicación de la Gestión de Cambios (si es aplicable) |
| 62 | 0 | Pruebas de validación/aceptación del Sistema |
| 63 | 0 | Mantener la Lista Maestra de Procesos de Entidad |
| 64 | 0 | Conducir Talleres de Validación |
| 65 | 0 | 1 Dirección de Desarrollo Territorial (No incluye Catastro) |
| 66 | 0 | 4 Dirección de Justicia y Vigilancia |
| 67 | 0 | 5 Dirección de Desarrollo Humano y Social |
| 68 | 0 | 8.3 Rentas |
| 69 | 0 | 8.4 Tesorería |
| 70 | 0 | 9.1 Mercados |

| ID | WBS | Task |
| --- | --- | --- |
| 71 | 0 | 9.2 Cementerio |
| 72 | 0 | 9.3 Camal |
| 73 | 0 | 10 Registro de la Propiedad y Mercantil |
| 74 | 0 | 11 Administración de bomberos |
| 75 | 0 | 12 CRM para ciudadanos. Ventanilla Única |
| 76 | 0 | 15.1 BI Desarrollo Territorial |
| 77 | 0 | 15.5 BI Obras Públicas Municipales |
| 78 | 0 | 15.7 BI Registro de la Propiedad y Mercantil |
| 79 | 0 | 16.1 Consultas Portal Web |
| 80 | 0 | 16.2 Aplicación para móviles (APP) |
| 81 | 0 | Pruebas de Aceptacion Sistema |
| 82 | 0 | Definir casos de prueba y alcance |
| 83 | 0 | Preparar ambiente de pruebas |
| 84 | 0 | Ejecutar el plan de pruebas de Aceptacion del Sistema |
| 85 | 0 | 1 Dirección de Desarrollo Territorial (No incluye Catastro) |
| 86 | 0 | 4 Dirección de Justicia y Vigilancia |
| 87 | 0 | 5 Dirección de Desarrollo Humano y Social |
| 88 | 0 | 8.3 Rentas |
| 89 | 0 | 8.4 Tesorería |
| 90 | 0 | 9.1 Mercados |
| 91 | 0 | 9.2 Cementerio |
| 92 | 0 | 9.3 Camal |
| 93 | 0 | 10 Registro de la Propiedad y Mercantil |
| 94 | 0 | 11 Administración de bomberos |
| 95 | 0 | 12 CRM para ciudadanos. Ventanilla Única |
| 96 | 0 | 15.1 BI Desarrollo Territorial |
| 97 | 0 | 15.5 BI Obras Públicas Municipales |
| 98 | 0 | 15.7 BI Registro de la Propiedad y Mercantil |
| 99 | 0 | 16.1 Consultas Portal Web |
| 100 | 0 | 16.2 Aplicación para móviles (APP) |
| 101 | 0 | Revisar los resultados de las pruebas y necesidades de cambios |
| 102 | 0 | Planificar Salida a Producción y Soporte |
| 103 | 0 | Definir Plan de Salida a Producción |
| 104 | 0 | Planificar Estrategia de Soporte |
| 105 | 0 | Planificar Administración del Sistema |
| 106 | 0 | Revisar la ETAPA del Proyecto |
| 107 | 0 | HITO: FINALIZACION ETAPA 3 |
| 108 | 0 | ETAPA 4: Preparación Final previo Despliegue en Producción - Módulos SC y AC |
| 109 | 0 | Gestión General del Proyecto |
| 110 | 0 | Confirmar el Plan de Entrenamiento |
| 111 | 0 | Finalizar plan de Salida a Producción |
| 112 | 0 | Entrenamiento en Modulos de Areas Funcionales Fase 1 |
| 113 | 0 | Entrenamiento de Usuarios Funcionales y Certificación de Procesos |
| 114 | 0 | 1 Dirección de Desarrollo Territorial (No incluye Catastro) |
| 115 | 0 | 4 Dirección de Justicia y Vigilancia |
| 116 | 0 | 5 Dirección de Desarrollo Humano y Social |
| 117 | 0 | 8.3 Rentas |
| 118 | 0 | 8.4 Tesorería |
| 119 | 0 | 9.1 Mercados |
| 120 | 0 | 9.2 Cementerio |
| 121 | 0 | 9.3 Camal |
| 122 | 0 | 10 Registro de la Propiedad y Mercantil |
| 123 | 0 | 11 Administración de bomberos |
| 124 | 0 | 12 CRM para ciudadanos. Ventanilla Única |
| 125 | 0 | 15.1 BI Desarrollo Territorial |
| 126 | 0 | 15.5 BI Obras Públicas Municipales |
| 127 | 0 | 15.7 BI Registro de la Propiedad y Mercantil |
| 128 | 0 | 16.1 Consultas Portal Web |
| 129 | 0 | 16.2 Aplicación para móviles (APP) |
| 130 | 0 | Entrenamiento de Usuario Técnicos |
| 131 | 0 | Preparación del Sistema |
| 132 | 0 | Completar la Administración del Sistema |
| 133 | 0 | Comprobación de la Puesta a Producción |
| 134 | 0 | Transición |
| 135 | 0 | Finalizar Procesamiento de Sistemas Legados |
| 136 | 0 | Realizar la Salida a Producción - Carga Inicial y Configuración Inicial |
| 137 | 0 | Revisar la ETAPA del Proyecto |
| 138 | 0 | HITO: FINALIZACION ETAPA 4 |
| 139 | 0 | ETAPA 5: Despliegue en Producción y Soporte Técnico - Módulos SC y AC |
| 140 | 0 | Soporte en Producción |

| ID | WBS | Task |
| --- | --- | --- |
| 141 | 0 | Soporte durante la Salida a Producción |
| 142 | 0 | Resolver incidentes críticos |
| 143 | 0 | Entregar el soporte y Administración al cliente |
| 144 | 0 | Mejora Continua |
| 145 | 0 | Monitoreo del Sistema y Acompañamiento ETAPA1 |
| 146 | 0 | Ajustes y Configuraciones finales al Software acorde a necesidades Entidad |
| 147 | 0 | Cierre de la ETAPA 5 |
| 148 | 0 | Reunión de Cierre de la ETAPA 5 |
| 149 | 0 | HITO: FIN DE LA ETAPA 5 |
| 150 | 0 | ETAPA 6: Estabilización, Apoyo Emisión 2019 y Desarrollo de funcionalidades no establecidas en el Alcance Contractual |
| 151 | 0 | Depuración de Errores de Calidad de Información fuente migrada (Base Oracle) |
| 152 | 0 | Soporte y Mantenimiento de Módulos de la Fase 1 |
| 153 | 0 | Adaptaciones a Software para incluir Nuevas funcionalidades no contempladas en alcance proyecto |
| 154 | 0 | Implementación de Licencia temporal de Modulo de Catastro Urbano SIIM |
| 155 | 0 | Migración de información de Emisión de Impuestos de Catastro Urbano 2019 |
| 156 | 0 | Creación de interfaces mediante ETLs para integración entre Sistema Oracle y SIIM para la recaudación de Impuestos 2019 de Catastro Urbano |
| 157 | 0 | Soporte en Recaudación de Impuestos de Catastro urbano y mejoras 2019 |
| 158 | 0 | Cierre de la FASE 1 |
| 159 | 0 | Reunión de Cierre de la FASE 1 |
| 160 | 0 | HITO: FIN DE LA FASE 1 |
| 161 | 0 | FASE 2: Implementación de Módulos de Planificación de Recursos Institucionales - PRI |
| 162 | 0 | ETAPA 1: Instalación del SIIM - Módulos PRI |
| 163 | 0 | Entrega e Instalación del Software |
| 164 | 0 | Instalar SIIM en Servidor |
| 165 | 0 | Instalar Módulos PRI |
| 166 | 0 | 2.1 Administración Técnica |
| 167 | 0 | 2.2 Salud Ocupacional y Riesgos |
| 168 | 0 | 3.2 Adquisiciones |
| 169 | 0 | 6.1 Administración de Bienes |
| 170 | 0 | 8.1 Contabilidad |
| 171 | 0 | 8.2 Presupuestos |
| 172 | 0 | 13 CRM para Urbanizaciones |
| 173 | 0 | 14 Dirección de Planificación Institucional (Incluye control de proyectos de Obras Públicas |
| 174 | 0 | 15.6 Servicios Corporativos |
| 175 | 0 | 15.8 BI Planificación Institucional |
| 176 | 0 | Entrega de Software |
| 177 | 0 | Revisar la ETAPA del Proyecto |
| 178 | 0 | HITO: FINALIZACION ETAPA 1 |
| 179 | 0 | ETAPA 2: Levantamiento de Características Institucionales - Módulos PRI |
| 180 | 0 | Actividades de Gestión del Proyecto |
| 181 | 0 | Revisión del Plan del Proyecto |
| 182 | 0 | Programar talleres de requerimientos de Entidad |
| 183 | 0 | Sesiones de Requerimientos del Entidad |
| 184 | 0 | Conducir Sesiones de Requerimientos |
| 185 | 0 | Crear Documento de Características del Entidad |
| 186 | 0 | Revisar el Documento de Características del Entidad |
| 187 | 0 | Revisar el Documento de Características del Entidad |
| 188 | 0 | Revisar el Plan del Proyecto |
| 189 | 0 | Revisar la ETAPA del Proyecto |
| 190 | 0 | HITO: FINALIZACION ETAPA 2 |
| 191 | 0 | ETAPA 3: Migración de Datos, Configuración y Pruebas de Operación de Módulos - Módulos PRI |
| 192 | 0 | Gestión General del Proyecto |
| 193 | 0 | Planificar cambio Organizacional |
| 194 | 0 | Planificar Entrenamiento a Usuarios Finales |
| 195 | 0 | Definir y Preparar la Migración de Datos |
| 196 | 0 | Configuración del Sistema en Producción |
| 197 | 0 | Instalar el SIIM en Producción |
| 198 | 0 | Configurar Inicialización del Sistema |
| 199 | 0 | Realizar la Migración de Datos |
| 200 | 0 | Desarrollar Adaptaciones al Software |
| 201 | 0 | Configuración del Sistema en base al Documento de Características del Entidad |
| 202 | 0 | Configurar Interfaces |
| 203 | 0 | Configurar Usuarios y Autorizaciones |
| 204 | 0 | Gestión del Cambio Organizacional |
| 205 | 0 | Conducir la comunicación de la Gestión de Cambios (si es aplicable) |
| 206 | 0 | Pruebas de validación del Sistema |
| 207 | 0 | Mantener la Lista Maestra de Procesos de Entidad |
| 208 | 0 | Conducir Talleres de Validación |
| 209 | 0 | 2.1 Administración Técnica |
| 210 | 0 | 2.2 Salud Ocupacional y Riesgos |

| ID | WBS | Task |
| --- | --- | --- |
| 211 | 0 | 3.2 Adquisiciones |
| 212 | 0 | 6.1 Administración de Bienes |
| 213 | 0 | 8.1 Contabilidad |
| 214 | 0 | 8.2 Presupuestos |
| 215 | 0 | 13 CRM para Urbanizaciones |
| 216 | 0 | 14 Dirección de Planificación Institucional (Incluye control de proyectos de Obras Públicas) |
| 217 | 0 | 15.6 BI Servicios Corporativos |
| 218 | 0 | 15.8 BI Planificación Institucional |
| 219 | 0 | Pruebas de aceptacion del Sistema |
| 220 | 0 | Definir casos de prueba y alcance |
| 221 | 0 | Preparar ambiente de pruebas |
| 222 | 0 | Ejecutar el plan de pruebas |
| 223 | 0 | 2.1 Administración Técnica |
| 224 | 0 | 2.2 Salud Ocupacional y Riesgos |
| 225 | 0 | 3.2 Adquisiciones |
| 226 | 0 | 6.1 Administración de Bienes |
| 227 | 0 | 8.1 Contabilidad |
| 228 | 0 | 8.2 Presupuestos |
| 229 | 0 | 13 CRM para Urbanizaciones |
| 230 | 0 | 14 Dirección de Planificación Institucional (Incluye control de proyectos de Obras Públicas) |
| 231 | 0 | 15.6 BI Servicios Corporativos |
| 232 | 0 | 15.8 BI Planificación Institucional |
| 233 | 0 | Revisar los resultados de las pruebas y necesidades de cambios |
| 234 | 0 | Planificar Salida a Producción y Soporte |
| 235 | 0 | Definir Plan de Salida a Producción |
| 236 | 0 | Planificar Estrategia de Soporte |
| 237 | 0 | Planificar Administración del Sistema |
| 238 | 0 | Revisar la ETAPA del Proyecto |
| 239 | 0 | HITO: FINALIZACION ETAPA 3 |
| 240 | 0 | ETAPA 4: Preparación Final previo Despliegue en Producción - Módulos PRI |
| 241 | 0 | Gestión General del Proyecto |
| 242 | 0 | Confirmar el Plan de Entrenamiento |
| 243 | 0 | Finalizar plan de Salida a Producción |
| 244 | 0 | Entrenamiento |
| 245 | 0 | Entrenamiento de Usuarios Funcionales y Certificación de Procesos |
| 246 | 0 | 2.1 Administración Técnica |
| 247 | 0 | 2.2 Salud Ocupacional y Riesgos |
| 248 | 0 | 3.2 Adquisiciones |
| 249 | 0 | 6.1 Administración de Bienes |
| 250 | 0 | 8.1 Contabilidad |
| 251 | 0 | 8.2 Presupuestos |
| 252 | 0 | 13 CRM para Urbanizaciones |
| 253 | 0 | 14 Dirección de Planificación Institucional (Incluye control de proyectos de Obras Públicas) |
| 254 | 0 | 15.6 BI Servicios Corporativos |
| 255 | 0 | 15.8 BI Planificación Institucional |
| 256 | 0 | Entrenamiento de Usuario Técnicos |
| 257 | 0 | Preparación del Sistema |
| 258 | 0 | Completar la Administración del Sistema |
| 259 | 0 | Comprobación de la Puesta a Producción |
| 260 | 0 | Transición |
| 261 | 0 | Finalizar Procesamiento de Sistemas Legados |
| 262 | 0 | Realizar la Salida a Producción - Carga Inicial y Configuración Inicial |
| 263 | 0 | Revisar la ETAPA del Proyecto |
| 264 | 0 | HITO: FINALIZACION ETAPA 4 |
| 265 | 0 | ETAPA 5: Despliegue en Producción y Soporte Técnico - Módulos PRI |
| 266 | 0 | Soporte en Producción |
| 267 | 0 | Soporte durante la Salida a Producción |
| 268 | 0 | Resolver incidentes críticos |
| 269 | 0 | Entregar el soporte y Administración al cliente |
| 270 | 0 | Mejora Continua |
| 271 | 0 | Monitoreo del Sistema y Acompañamiento ETAPA2 |
| 272 | 0 | Ajustes y Configuraciones finales al Software acorde a necesidades Entidad |
| 273 | 0 | Cierre de la FASE 2 |
| 274 | 0 | Reunión de Cierre de la FASE 2 |
| 275 | 0 | HITO: FIN DE LA FASE 2 |
| 276 | 0 | FASE 3: Implementación de Módulos de Planificación de Recursos Institucionales - PRI |
| 277 | 0 | ETAPA 1: Instalación del SIIM - Módulos PRI |
| 278 | 0 | Entrega e Instalación del Software |
| 279 | 0 | Instalar SIIM en Servidor |
| 280 | 0 | Instalar Módulos PRI |

| ID | WBS | Task |
| --- | --- | --- |
| 281 | 0 | Entrega de Software |
| 282 | 0 | Revisar la ETAPA del Proyecto |
| 283 | 0 | HITO: FINALIZACION ETAPA 1 |
| 284 | 0 | ETAPA 2: Levantamiento de Características Institucionales - Módulos PRI |
| 285 | 0 | Actividades de Gestión del Proyecto |
| 286 | 0 | Revisión del Plan del Proyecto |
| 287 | 0 | Programar talleres de requerimientos de Entidad |
| 288 | 0 | Sesiones de Requerimientos del Entidad |
| 289 | 0 | Conducir Sesiones de Requerimientos |
| 290 | 0 | Crear Documento de Características del Entidad |
| 291 | 0 | Revisar el Documento de Características del Entidad |
| 292 | 0 | Revisar el Documento de Características del Entidad |
| 293 | 0 | Revisar el Plan del Proyecto |
| 294 | 0 | Revisar la ETAPA del Proyecto |
| 295 | 0 | HITO: FINALIZACION ETAPA 2 |
| 296 | 0 | ETAPA 3: Migración de Datos, Configuración y Pruebas de Operación de Módulos - Módulos PRI |
| 297 | 0 | Gestión General del Proyecto |
| 298 | 0 | Planificar cambio Organizacional |
| 299 | 0 | Planificar Entrenamiento a Usuarios Finales |
| 300 | 0 | Definir y Preparar la Migración de Datos |
| 301 | 0 | Configuración del Sistema en Producción |
| 302 | 0 | Instalar el SIIM en Producción |
| 303 | 0 | Configurar Inicialización del Sistema |
| 304 | 0 | Realizar la Migración de Datos |
| 305 | 0 | Desarrollar Adaptaciones al Software |
| 306 | 0 | Configuración del Sistema en base al Documento de Características del Entidad |
| 307 | 0 | Configurar Interfaces |
| 308 | 0 | Configurar Usuarios y Autorizaciones |
| 309 | 0 | Gestión del Cambio Organizacional |
| 310 | 0 | Conducir la comunicación de la Gestión de Cambios (si es aplicable) |
| 311 | 0 | Pruebas de validación/aceptación del Sistema |
| 312 | 0 | Mantener la Lista Maestra de Procesos de Entidad |
| 313 | 0 | Conducir Talleres de Validación |
| 314 | 0 | 3.1 Compras Públicas |
| 315 | 0 | 6.2 Servicios Generales |
| 316 | 0 | 8.5 Gestión Jurídica - Financiera |
| 317 | 0 | 15.2 BI Financiero |
| 318 | 0 | 15.3 BI Administración del Talento Humano |
| 319 | 0 | 15.4 BI Compras Públicas |
| 320 | 0 | 15.9 Tablero de Control |
| 321 | 0 | Pruebas de aceptacion del Sistema |
| 322 | 0 | Definir casos de prueba y alcance |
| 323 | 0 | Preparar ambiente de pruebas |
| 324 | 0 | Ejecutar el plan de pruebas |
| 325 | 0 | 3.1 Compras Públicas |
| 326 | 0 | 6.2 Servicios Generales |
| 327 | 0 | 8.5 Gestión Jurídica - Financiera |
| 328 | 0 | 15.2 BI Financiero |
| 329 | 0 | 15.3 BI Administración del Talento Humano |
| 330 | 0 | 15.4 BI Compras Públicas |
| 331 | 0 | 15.9 Tablero de Control |
| 332 | 0 | Revisar los resultados de las pruebas y necesidades de cambios |
| 333 | 0 | Planificar Salida a Producción y Soporte |
| 334 | 0 | Definir Plan de Salida a Producción |
| 335 | 0 | Planificar Estrategia de Soporte |
| 336 | 0 | Planificar Administración del Sistema |
| 337 | 0 | Revisar la ETAPA del Proyecto |
| 338 | 0 | HITO: FINALIZACION ETAPA 3 |
| 339 | 0 | ETAPA 4: Preparación Final previo Despliegue en Producción - Módulos PRI |
| 340 | 0 | Gestión General del Proyecto |
| 341 | 0 | Confirmar el Plan de Entrenamiento |
| 342 | 0 | Finalizar plan de Salida a Producción |
| 343 | 0 | Entrenamiento |
| 344 | 0 | Entrenamiento de Usuarios Funcionales y Certificación de Procesos |
| 345 | 0 | 3.1 Compras Públicas |
| 346 | 0 | 6.2 Servicios Generales |
| 347 | 0 | 8.5 Gestión Jurídica - Financiera |
| 348 | 0 | 15.2 BI Financiero |
| 349 | 0 | 15.3 BI Administración del Talento Humano |
| 350 | 0 | 15.4 BI Compras Públicas |

| ID | WBS | Task |
| --- | --- | --- |
| 351 | 0 | 15.9 Tablero de Control |
| 352 | 0 | Entrenamiento de Usuario Técnicos |
| 353 | 0 | Preparación del Sistema |
| 354 | 0 | Completar la Administración del Sistema |
| 355 | 0 | Comprobación de la Puesta a Producción |
| 356 | 0 | Transición |
| 357 | 0 | Finalizar Procesamiento de Sistemas Legados |
| 358 | 0 | Realizar la Salida a Producción - Carga Inicial y Configuración Inicial |
| 359 | 0 | Revisar la ETAPA del Proyecto |
| 360 | 0 | HITO: FINALIZACION ETAPA 4 |
| 361 | 0 | ETAPA 5: Despliegue en Producción y Soporte Técnico - Módulos PRI |
| 362 | 0 | Soporte en Producción |
| 363 | 0 | Soporte durante la Salida a Producción |
| 364 | 0 | Resolver incidentes críticos |
| 365 | 0 | Entregar el soporte y Administración al cliente |
| 366 | 0 | Mejora Continua |
| 367 | 0 | Monitoreo del Sistema y Acompañamiento |
| 368 | 0 | Ajustes y Configuraciones finales al Software acorde a necesidades Entidad |
| 369 | 0 | Cierre de la FASE 3 y Proyecto |
| 370 | 0 | Reunión de Cierre de la FASE 3 y Proyecto |
| 371 | 0 | HITO: FIN DE LA FASE 3 y Proyecto |
